# SCHEDULE, PIDEC

Schedule from MS Project, 2020-12-22 to 2022-07-06.

## Calendars

- Standard: Mon-Fri 08:00-12:00, 13:00-17:00; Sat-Sun off.

## Schedule

| ID | WBS | Task | Duration | Start | Finish | Predecessors | Total slack | Free slack | Constraint |
| --- | --- | --- | --- | --- | --- | --- | --- | --- | --- |
| 1 | 1 | **ENGINEERING** | 153d | 2020-12-22 | 2021-07-22 |  | 92d |  |  |
| 2 | 1.1 | API FIRED DATA SHEET | 44d | 2020-12-22 | 2021-02-20 |  | 358d |  | finish no earlier than 2021-02-20 |
| 3 | 1.2 | BURNERS DATA SHEET AND CURVES | 44d | 2020-12-22 | 2021-02-20 |  | 358d |  | finish no earlier than 2021-02-20 |
| 4 | 1.3 | CENTRIFUGAL FAN DATA SHEET | 44d | 2020-12-22 | 2021-02-20 |  | 358d |  | finish no earlier than 2021-02-20 |
| 5 | 1.4 | AIRPREHEATER DATA SHEET | 44d | 2020-12-22 | 2021-02-20 |  | 358d |  | finish no earlier than 2021-02-20 |
| 6 | 1.5 | PROCESS INSTRUMENT DATA SHEETS(PRESSURE & FLOW TRANSMITTERS ,PRESSURE GAUGE,CONTROL VALVE…) | 45d | 2021-04-06 | 2021-06-07 | 7FF | 252d | 3d | finish no earlier than 2021-06-07 |
| 7 | 1.6 | P & I D | 60d | 2020-12-28 | 2021-03-21 |  | 308d | 56d | finish no earlier than 2021-03-21 |
| 8 | 1.7 | PRESSURE PART CALCULATION | 30d | 2021-01-15 | 2021-02-25 |  | 354d |  | finish no earlier than 2021-02-25 |
| 9 | 1.8 | LAYOUT DRAWING - PRIMARY REFORM PLAN & ELEVATION | 30d | 2021-05-17 | 2021-06-27 |  | 268d |  | finish no earlier than 2021-06-27 |
| 10 | 1.9 | G.A. REFORMER - RADIANT SECTION ASSEMBLY ELEVATION | 50d | 2021-04-19 | 2021-06-27 |  | 8d | 0d | finish no earlier than 2021-06-27 |
| 11 | 1.10 | G.A. CONVECTION SECTION -ELEVATION HE-1004 / HE-1005 | 50d | 2021-04-19 | 2021-06-27 |  | 38d | 0d | finish no earlier than 2021-06-27 |
| 12 | 1.11 | G.A. CONVECTION SECTION - ELEVATION HE-1002 | 50d | 2021-04-19 | 2021-06-27 |  | 268d |  | finish no earlier than 2021-06-27 |
| 13 | 1.12 | G.A. STEAM SUPER HEATER - RADIANT SECTION ASEMBLY ELEVATIONS - H-1003 | 50d | 2021-04-19 | 2021-06-27 |  | 268d |  | finish no earlier than 2021-06-27 |
| 14 | 1.13 | MATERIAL TAKE OFF LIST | 30d | 2021-06-11 | 2021-07-22 | 6 | 249d |  | finish no earlier than 2021-07-22 |
| 15 | 1.14 | STEEL STRUCTURAL CALCULATION | 30d | 2021-03-17 | 2021-04-27 |  | 311d |  | finish no earlier than 2021-04-27 |
| 16 | 1.15 | STEEL STRUCTURE DRAWINGS | 40d | 2021-05-17 | 2021-07-09 | 10FF+10d | 8d | 0d |  |
| 17 | 1.16 | FOUNDATION DRAWING ASSEMBLY H-1001 | 49d | 2020-12-22 | 2021-02-27 |  | 353d |  | finish no earlier than 2021-02-27 |
| 18 | 1.17 | LOADS AND FOUNDATION - H-1001 | 49d | 2020-12-22 | 2021-02-27 |  | 353d |  | finish no earlier than 2021-02-27 |
| 19 | 1.18 | FOUNDATION DRAWING ASSEMBLY H-1003 | 49d | 2020-12-22 | 2021-02-27 |  | 353d |  | finish no earlier than 2021-02-27 |
| 20 | 1.19 | LOADS AND FOUNDATION - H-1003 | 49d | 2020-12-22 | 2021-02-27 |  | 353d |  | finish no earlier than 2021-02-27 |
| 21 | 1.20 | FOUNDATION DRAWING ASSEMBLY HE-1002,1004,1005 | 49d | 2020-12-22 | 2021-02-27 |  | 353d |  | finish no earlier than 2021-02-27 |
| 22 | 1.21 | LOAD AND FOUNDATION HE-1002,1004,1005 | 49d | 2020-12-22 | 2021-02-27 |  | 353d |  | finish no earlier than 2021-02-27 |
| 23 | 2 | **PROCUREMENT** | 384d | 2021-01-15 | 2022-07-06 |  | 0d |  |  |
| 24 | 2.1 | **REQ PREPARATION PHASE** | 146d | 2021-01-15 | 2021-08-08 |  | 14d |  |  |
| 25 | 2.1.1 | REQUISITION FOR CATALYST TUBE | 30d | 2021-01-15 | 2021-02-25 |  | 104d | 0d | finish no earlier than 2021-02-25 |
| 26 | 2.1.2 | REQUISITION FOR BURNER | 30d | 2021-01-20 | 2021-03-02 |  | 121d | 0d | finish no earlier than 2021-03-02 |
| 27 | 2.1.3 | REQUISITION FOR STEEL STRUCTURE | 30d | 2021-06-07 | 2021-07-16 | 16SS+15d | 8d | 0d | finish no earlier than 2021-04-27 |
| 28 | 2.1.4 | REQUISITION FOR REFRACTORY | 30d | 2021-06-25 | 2021-08-05 |  | 89d | 0d | finish no earlier than 2021-08-05 |
| 29 | 2.1.5 | REQUISITION FOR EXPANSION JOIN | 30d | 2021-06-28 | 2021-08-08 |  | 98d | 0d | finish no earlier than 2021-08-08 |
| 30 | 2.1.6 | REQUISITION FOR SPRING HANGER | 30d | 2021-06-28 | 2021-08-08 |  | 38d | 0d | finish no earlier than 2021-08-08 |
| 31 | 2.1.7 | REQUISITION FOR AIR PREHEATER | 30d | 2021-05-07 | 2021-06-17 |  | 34d | 0d | finish no earlier than 2021-06-17 |
| 32 | 2.1.8 | REQUISITION FOR CONVECTION SECTION | 30d | 2021-06-24 | 2021-08-04 |  | 0d |  | finish no earlier than 2021-08-04 |
| 33 | 2.1.9 | REQUISITION FOR FAN & TURBIN | 30d | 2021-01-25 | 2021-03-07 |  | 8d | 0d | finish no earlier than 2021-03-07 |
| 34 | 2.1.10 | REQUISITION FOR PIPING | 30d | 2021-05-31 | 2021-07-09 | 11FF+10d | 38d | 0d | finish no earlier than 2021-06-17 |
| 35 | 2.1.11 | REQUISITION FOR INSTRUMENTATION | 30d | 2021-05-07 | 2021-06-17 |  | 94d | 0d | finish no earlier than 2021-06-17 |
| 36 | 2.1.12 | REQUISITION FOR PRESSURE & FLOW TRANSMITTER | 30d | 2021-06-25 | 2021-08-05 |  | 59d | 0d | finish no earlier than 2021-08-05 |
| 37 | 2.1.13 | REQUISITION FOR PRESSURE GAUGE | 30d | 2021-06-25 | 2021-08-05 |  | 59d | 0d | finish no earlier than 2021-08-05 |
| 38 | 2.1.14 | REQUISITION FOR TEMPERATURE TRANSMITTERS | 30d | 2021-06-25 | 2021-08-05 |  | 59d | 0d | finish no earlier than 2021-08-05 |
| 39 | 2.1.15 | REQUISITION FOR INSTRUMENTATION CABLE | 30d | 2021-06-25 | 2021-08-05 |  | 59d | 0d | finish no earlier than 2021-08-05 |
| 40 | 2.1.16 | REQUISITION FOR SOLENOID VALVE | 30d | 2021-06-25 | 2021-08-05 |  | 59d | 0d | finish no earlier than 2021-08-05 |
| 41 | 2.1.17 | REQUISITION FOR PRESSURE SWITCHES | 30d | 2021-06-25 | 2021-08-05 |  | 59d | 0d | finish no earlier than 2021-08-05 |
| 42 | 2.1.18 | REQUISITION FOR O2 ANALYZER | 30d | 2021-06-25 | 2021-08-05 |  | 59d | 0d | finish no earlier than 2021-08-05 |
| 43 | 2.1.19 | REQUISITION FOR CONTROL VALVE | 30d | 2021-06-25 | 2021-08-05 |  | 59d | 0d | finish no earlier than 2021-08-05 |
| 44 | 2.1.20 | REQUISITION FOR ON/OFF VALVE | 30d | 2021-06-25 | 2021-08-05 |  | 59d | 0d | finish no earlier than 2021-08-05 |
| 45 | 2.1.21 | REQUISITION FOR FLOW ORIFICES PLATE | 30d | 2021-06-25 | 2021-08-05 |  | 59d | 0d | finish no earlier than 2021-08-05 |
| 46 | 2.1.22 | REQUISITION FOR FLOW METER TRANSMITTER | 30d | 2021-06-25 | 2021-08-05 |  | 59d | 0d | finish no earlier than 2021-08-05 |

| ID | WBS | Task | Duration | Start | Finish | Predecessors | Total slack |
| --- | --- | --- | --- | --- | --- | --- | --- |
| 47 | 2.2 | **PURCHASING , FABRICATION,TEST PHASE** | 324d | 2021-04-09 | 2022-07-06 |  | 0d |
| 48 | 2.2.1 | REQUISITION FOR CATALYST TUBE | 220d | 2021-04-09 | 2022-02-10 | 25FS+30d | 104d |
| 49 | 2.2.2 | REQUISITION FOR BURNER | 200d | 2021-04-14 | 2022-01-18 | 26FS+30d | 121d |
| 50 | 2.2.3 | REQUISITION FOR STEEL STRUCTURE | 230d | 2021-08-09 | 2022-06-24 | 27FS+15d | 8d |
| 51 | 2.2.4 | REQUISITION FOR REFRACTORY | 120d | 2021-09-17 | 2022-03-03 | 28FS+30d | 89d |
| 52 | 2.2.5 | REQUISITION FOR EXPANSION JOIN | 110d | 2021-09-20 | 2022-02-18 | 29FS+30d | 98d |
| 53 | 2.2.6 | REQUISITION FOR SPRING HANGER | 170d | 2021-09-20 | 2022-05-13 | 30FS+30d | 38d |
| 54 | 2.2.7 | REQUISITION FOR AIR PREHEATER | 210d | 2021-07-30 | 2022-05-19 | 31FS+30d | 34d |
| 55 | 2.2.8 | REQUISITION FOR CONVECTION SECTION | 210d | 2021-09-16 | 2022-07-06 | 32FS+30d | 0d |
| 56 | 2.2.9 | REQUISITION FOR FAN & TURBIN | 310d | 2021-04-19 | 2022-06-24 | 33FS+30d | 8d |
| 57 | 2.2.10 | REQUISITION FOR PIPING | 190d | 2021-08-23 | 2022-05-13 | 34FS+30d | 38d |
| 58 | 2.2.11 | REQUISITION FOR INSTRUMENTATION | 150d | 2021-07-30 | 2022-02-24 | 35FS+30d | 94d |
| 59 | 2.2.12 | REQUISITION FOR PRESSURE & FLOW TRANSMITTER | 150d | 2021-09-17 | 2022-04-14 | 36FS+30d | 59d |
| 60 | 2.2.13 | REQUISITION FOR PRESSURE GAUGE | 150d | 2021-09-17 | 2022-04-14 | 37FS+30d | 59d |
| 61 | 2.2.14 | REQUISITION FOR TEMPERATURE TRANSMITTERS | 150d | 2021-09-17 | 2022-04-14 | 38FS+30d | 59d |
| 62 | 2.2.15 | REQUISITION FOR INSTRUMENTATION CABLE | 150d | 2021-09-17 | 2022-04-14 | 39FS+30d | 59d |
| 63 | 2.2.16 | REQUISITION FOR SOLENOID VALVE | 150d | 2021-09-17 | 2022-04-14 | 40FS+30d | 59d |
| 64 | 2.2.17 | REQUISITION FOR PRESSURE SWITCHES | 150d | 2021-09-17 | 2022-04-14 | 41FS+30d | 59d |
| 65 | 2.2.18 | REQUISITION FOR O2 ANALYZER | 150d | 2021-09-17 | 2022-04-14 | 42FS+30d | 59d |
| 66 | 2.2.19 | REQUISITION FOR CONTROL VALVE | 150d | 2021-09-17 | 2022-04-14 | 43FS+30d | 59d |
| 67 | 2.2.20 | REQUISITION FOR ON/OFF VALVE | 150d | 2021-09-17 | 2022-04-14 | 44FS+30d | 59d |
| 68 | 2.2.21 | REQUISITION FOR FLOW ORIFICES PLAT | 150d | 2021-09-17 | 2022-04-14 | 45FS+30d | 59d |
| 69 | 2.2.22 | REQUISITION FOR FLOW METER TRANSMITTER | 150d | 2021-09-17 | 2022-04-14 | 46FS+30d | 59d |
